# Exhibit 8

Schedule from MS Project, 2003-05-26 to 2005-06-14, costs in $, A marks actual dates.

## Calendars

- Standard: Mon-Fri 08:00-12:00, 13:00-17:00; Sat-Sun off.

## Resources

| Resource | Rate |
| --- | --- |
| Chris Johnson (Project Manager) | 75 |
| Ryan Neff (Functional Lead) | 75 |
| Stacy Lyle ( Functional Analyst) | 75 |
| Rick Burke (Infrastructure Lead) | 75 |
| Marc Sanders (Development Lead) | 75 |
| Developer 1 (TBD) | 165 |
| Sanjay Vohra (DBA) | 75 |
| Kara Siposki (Test Lead) | 75 |
| Todd Eliason (Tester) | 75 |
| Developer 2 (TBD) | 175 |
| Developer 3 (TBD) | 175 |

## Schedule

| ID | WBS | Task | Duration | Start | Finish | Predecessors | Complete | Resources | Work | Actual work | Cost | Actual cost |
| --- | --- | --- | --- | --- | --- | --- | --- | --- | --- | --- | --- | --- |
| 1 | 1 | **Overall Project** | 537d | 2003-05-26 A | 2005-06-14 A |  | 100% |  | 34959h | 34959h | 3,748,282 | 3,748,282 |
| 2 | 1.1 | **Project Management** | 127d | 2004-12-20 A | 2005-06-14 A |  | 100% |  | 1016h | 1016h | 76,200 | 76,200 |
| 3 | 1.1.1 | Manage Project | 127d | 2004-12-20 A | 2005-06-14 A | 59FF | 100% | Chris Johnson (Project Manager) | 1016h | 1016h | 76,200 | 76,200 |
| 4 | 1.2 | **System Requirements** | 29d | 2003-05-26 A | 2003-07-03 A |  | 100% |  | 616h | 616h | 46,200 | 46,200 |
| 5 | 1.2.1 | Gather Business Requirements | 8d | 2003-05-26 A | 2003-06-04 A |  | 100% | Ryan Neff (Functional Lead); Stacy Lyle ( Functional Analyst) | 128h | 128h | 9,600 | 9,600 |
| 6 | 1.2.2 | Design Business Process Flows | 4d | 2003-06-05 A | 2003-06-10 A | 5 | 100% | Ryan Neff (Functional Lead); Stacy Lyle ( Functional Analyst) | 64h | 64h | 4,800 | 4,800 |
| 7 | 1.2.3 | Finalize Technical Requirements | 6d | 2003-05-26 A | 2003-06-02 A |  | 100% | Rick Burke (Infrastructure Lead) | 48h | 48h | 3,600 | 3,600 |
| 8 | 1.2.4 | Create Operational Requirements | 15d | 2003-06-11 A | 2003-07-01 A | 5, 6 | 100% | Ryan Neff (Functional Lead); Stacy Lyle ( Functional Analyst); Rick Burke (Infrastructure Lead) | 360h | 360h | 27,000 | 27,000 |
| 9 | 1.2.5 | Identify Technical Infrastructure Needs | 2d | 2003-07-02 A | 2003-07-03 A | 7, 8 | 100% | Rick Burke (Infrastructure Lead) | 16h | 16h | 1,200 | 1,200 |
| 10 | 1.3 | **Software Requirements** | 19d | 2003-07-02 A | 2003-07-28 A |  | 100% |  | 320h | 320h | 24,000 | 24,000 |
| 11 | 1.3.1 | **Create Functional Requiremnets** | 19d | 2003-07-02 A | 2003-07-28 A | 5, 6, 8 | 100% |  | 208h | 208h | 15,600 | 15,600 |
| 12 | 1.3.1.1 | Capture Customer Profile | 4d | 2003-07-02 A | 2003-07-07 A |  | 100% | Ryan Neff (Functional Lead) | 32h | 32h | 2,400 | 2,400 |
| 13 | 1.3.1.2 | View and Search Product Catalog | 6d | 2003-07-07 A | 2003-07-14 A |  | 100% | Ryan Neff (Functional Lead) | 48h | 48h | 3,600 | 3,600 |
| 14 | 1.3.1.3 | Updating and Calculating Shopping Cart | 3d | 2003-07-15 A | 2003-07-17 A | 13 | 100% | Ryan Neff (Functional Lead) | 24h | 24h | 1,800 | 1,800 |
| 15 | 1.3.1.4 | Taking Payments | 6d | 2003-07-08 A | 2003-07-15 A |  | 100% | Stacy Lyle ( Functional Analyst) | 48h | 48h | 3,600 | 3,600 |
| 16 | 1.3.1.5 | Submit Order | 4d | 2003-07-18 A | 2003-07-23 A | 12, 13, 14, 15 | 100% | Ryan Neff (Functional Lead) | 32h | 32h | 2,400 | 2,400 |
| 17 | 1.3.1.6 | Check Order History & Order Status | 3d | 2003-07-24 A | 2003-07-28 A | 16 | 100% | Ryan Neff (Functional Lead) | 24h | 24h | 1,800 | 1,800 |
| 18 | 1.3.2 | Create Data Requirements | 3d | 2003-07-15 A | 2003-07-17 A | 12, 13 | 100% | Stacy Lyle ( Functional Analyst) | 24h | 24h | 1,800 | 1,800 |
| 19 | 1.3.3 | Create ERP Interface Requirements | 7d | 2003-07-18 A | 2003-07-28 A | 16SS | 100% | Stacy Lyle ( Functional Analyst) | 56h | 56h | 4,200 | 4,200 |
| 20 | 1.3.4 | Create User Interface Requirements | 4d | 2003-07-02 A | 2003-07-07 A | 11SS | 100% | Stacy Lyle ( Functional Analyst) | 32h | 32h | 2,400 | 2,400 |
| 21 | 1.4 | **Detailed Design** | 39.5d | 2003-05-26 A | 2003-07-18 A |  | 100% |  | 1444h | 1444h | 136,740 | 136,740 |
| 22 | 1.4.1 | Design Capture Customer Profile Pages & Components | 13.5d | 2003-05-26 A | 2003-06-12 A |  | 100% | Marc Sanders (Development Lead); Ryan Neff (Functional Lead) [50%] | 162h | 162h | 12,150 | 12,150 |
| 23 | 1.4.2 | Design View and Search Product Catalog Pages & Components | 13.5d | 2003-05-26 A | 2003-06-12 A |  | 100% | Developer 1 (TBD); Ryan Neff (Functional Lead) [50%] | 162h | 162h | 21,870 | 21,870 |
| 24 | 1.4.3 | Design Updating and Calculating Shopping Cart | 6d | 2003-06-12 A | 2003-06-20 A | 23 | 100% | Developer 1 (TBD); Ryan Neff (Functional Lead) | 96h | 96h | 11,520 | 11,520 |
| 25 | 1.4.4 | Design Taking Payments Pages & Components | 6d | 2003-05-26 A | 2003-06-02 A |  | 100% | Marc Sanders (Development Lead); Stacy Lyle ( Functional Analyst) | 96h | 96h | 7,200 | 7,200 |
| 26 | 1.4.5 | Design Submit Order Pages & Components | 16d | 2003-06-20 A | 2003-07-14 A | 22, 23, 24, 25 | 100% | Marc Sanders (Development Lead); Ryan Neff (Functional Lead) | 256h | 256h | 19,200 | 19,200 |
| 27 | 1.4.6 | Design Check Order History & Order Status Pages & Components | 4d | 2003-07-14 A | 2003-07-18 A | 26 | 100% | Marc Sanders (Development Lead); Ryan Neff (Functional Lead) | 64h | 64h | 4,800 | 4,800 |
| 28 | 1.4.7 | Design Logical & Physical Data Model | 18d | 2003-05-26 A | 2003-06-18 A |  | 100% | Sanjay Vohra (DBA); Stacy Lyle ( Functional Analyst) | 288h | 288h | 21,600 | 21,600 |
| 29 | 1.4.8 | Design ERP Interface | 20d | 2003-06-20 A | 2003-07-18 A | 22, 23, 24, 25 | 100% | Developer 1 (TBD); Stacy Lyle ( Functional Analyst) | 320h | 320h | 38,400 | 38,400 |

| ID | WBS | Task | Duration | Start | Finish | Predecessors | Complete | Resources | Work | Actual work | Cost | Actual cost |
| --- | --- | --- | --- | --- | --- | --- | --- | --- | --- | --- | --- | --- |
| 30 | 1.5 | **Test Planning** | 56d | 2003-08-21 A | 2003-11-06 A |  | 100% |  | 896h | 896h | 67,200 | 67,200 |
| 31 | 1.5.1 | Gather Testing Requirements | 14d | 2003-08-21 A | 2003-09-09 A | 11 | 100% | Kara Siposki (Test Lead); Todd Eliason (Tester) | 224h | 224h | 16,800 | 16,800 |
| 32 | 1.5.2 | Create System Test Plan & Test Cases | 20d | 2003-09-10 A | 2003-10-07 A | 31, 21 | 100% | Kara Siposki (Test Lead); Todd Eliason (Tester) | 320h | 320h | 24,000 | 24,000 |
| 33 | 1.5.3 | Write System Test Script | 22d | 2003-10-08 A | 2003-11-06 A | 32 | 100% | Kara Siposki (Test Lead); Todd Eliason (Tester) | 352h | 352h | 26,400 | 26,400 |
| 34 | 1.6 | **Technical Infrastructure** | 100.2d | 2003-05-26 A | 2003-10-13 A |  | 100% |  | 780.96h | 780.96h | 58,572 | 58,572 |
| 35 | 1.6.1 | Create Development Environment | 20d | 2003-05-26 A | 2003-06-20 A |  | 100% | Rick Burke (Infrastructure Lead) | 160h | 160h | 12,000 | 12,000 |
| 36 | 1.6.2 | Create Testing Environment | 34.2d | 2003-06-23 A | 2003-08-08 A | 35 | 100% | Rick Burke (Infrastructure Lead) [90%] | 246.24h | 246.24h | 18,468 | 18,468 |
| 37 | 1.6.3 | Support Development Environment | 3.8d | 2003-06-23 A | 2003-06-26 A | 35 | 100% | Rick Burke (Infrastructure Lead) [10%] | 3.04h | 3.04h | 228 | 228 |
| 38 | 1.6.4 | Support Testing Environment & Deployment | 46d | 2003-08-08 A | 2003-10-13 A | 36 | 100% | Rick Burke (Infrastructure Lead) | 368h | 368h | 27,600 | 27,600 |
| 39 | 1.6.5 | Support Database | 4.6d | 2003-07-14 A | 2003-07-21 A | 47 | 100% | Sanjay Vohra (DBA) [10%] | 3.68h | 3.68h | 276 | 276 |
| 40 | 1.7 | **Development & Unit Test** | 65.5d | 2003-06-23 A | 2003-09-22 A | 35 | 100% |  | 1678h | 1678h | 207,610 | 207,610 |
| 41 | 1.7.1 | Build Capture Customer Profile Pages & Components | 13d | 2003-06-23 A | 2003-07-09 A | 22 | 100% | Developer 2 (TBD) | 104h | 104h | 18,200 | 18,200 |
| 42 | 1.7.2 | Build View and Search Product Catalog Pages & Components | 12d | 2003-06-23 A | 2003-07-08 A | 23 | 100% | Developer 3 (TBD) | 96h | 96h | 16,800 | 16,800 |
| 43 | 1.7.3 | Build Updating and Calculating Shopping Cart | 7d | 2003-07-09 A | 2003-07-17 A | 24, 42 | 100% | Developer 3 (TBD) | 56h | 56h | 9,800 | 9,800 |
| 44 | 1.7.4 | Build Taking Payments Pages & Components | 6d | 2003-06-23 A | 2003-06-30 A | 25 | 100% | Developer 2 (TBD) | 48h | 48h | 8,400 | 8,400 |
| 45 | 1.7.5 | Build Submit Order Pages & Components | 24d | 2003-07-18 A | 2003-08-20 A | 26, 41, 42, 43, 44 | 100% | Developer 2 (TBD); Developer 3 (TBD) | 384h | 384h | 67,200 | 67,200 |
| 46 | 1.7.6 | Build Check Order History & Order Status Pages & Components | 6d | 2003-07-18 A | 2003-07-28 A | 27 | 100% | Marc Sanders (Development Lead) | 48h | 48h | 3,600 | 3,600 |
| 47 | 1.7.7 | Build Logical & Physical Data Model | 15.5d | 2003-06-23 A | 2003-07-14 A | 28 | 100% | Sanjay Vohra (DBA) [50%] | 62h | 62h | 4,650 | 4,650 |
| 48 | 1.7.8 | Build ERP Interface | 18d | 2003-07-18 A | 2003-08-13 A | 29 | 100% | Developer 1 (TBD) | 144h | 144h | 23,760 | 23,760 |
| 49 | 1.7.9 | Support Developments & Assembly Test | 46d | 2003-07-18 A | 2003-09-22 A | 21 | 100% | Ryan Neff (Functional Lead); Stacy Lyle ( Functional Analyst) | 736h | 736h | 55,200 | 55,200 |
| 50 | 1.8 | **Testing** | 282d | 2003-09-10 A | 2004-10-07 A |  | 100% |  | 16096h | 16096h | 1,810,400 | 1,810,400 |
| 51 | 1.8.1 | **Perform Assembly Testing** | 32d | 2003-09-10 A | 2003-10-23 A | 31 | 100% |  | 736h | 736h | 101,600 | 101,600 |
| 52 | 1.8.1.1 | Perform Phase 1 Testing | 12d | 2003-09-10 A | 2003-09-25 A | 41, 42, 43 | 100% | Marc Sanders (Development Lead) | 96h | 96h | 7,200 | 7,200 |
| 53 | 1.8.1.2 | Perform Phase 2 Testing | 20d | 2003-09-26 A | 2003-10-23 A | 44, 45, 46, 52, 47, 48 | 100% | Developer 1 (TBD); Developer 2 (TBD); Developer 3 (TBD); Marc Sanders (Development Lead) | 640h | 640h | 94,400 | 94,400 |
| 54 | 1.8.2 | Perform System Testing | 160d | 2003-11-07 A | 2004-06-17 A | 51, 32, 33 | 100% | Developer 1 (TBD); Developer 2 (TBD); Developer 3 (TBD); Kara Siposki (Test Lead); Marc Sanders (Development Lead); Ryan Neff (Functional Lead); Stacy Lyle ( Functional Analyst); Todd Eliason (Tester) | 10240h | 10240h | 1,139,200 | 1,139,200 |
| 55 | 1.8.3 | Perform Validation Testing | 80d | 2004-06-18 A | 2004-10-07 A | 54 | 100% | Developer 1 (TBD); Developer 2 (TBD); Developer 3 (TBD); Kara Siposki (Test Lead); Marc Sanders (Development Lead); Ryan Neff (Functional Lead); Stacy Lyle ( Functional Analyst); Todd Eliason (Tester) | 5120h | 5120h | 569,600 | 569,600 |

| ID | WBS | Task | Duration | Start | Finish | Predecessors | Complete | Resources | Work | Actual work | Cost | Actual cost |
| --- | --- | --- | --- | --- | --- | --- | --- | --- | --- | --- | --- | --- |
| 56 | 1.9 | **Deployment** | 178d | 2004-10-08 A | 2005-06-14 A |  | 100% |  | 12112h | 12112h | 1,321,360 | 1,321,360 |
| 57 | 1.9.1 | Implementing System | 80d | 2004-10-08 A | 2005-01-27 A | 50 | 100% | Developer 1 (TBD); Developer 2 (TBD); Developer 3 (TBD); Kara Siposki (Test Lead); Marc Sanders (Development Lead); Ryan Neff (Functional Lead); Stacy Lyle ( Functional Analyst); Todd Eliason (Tester) | 5120h | 5120h | 569,600 | 569,600 |
| 58 | 1.9.2 | Deploy To Production | 8d | 2005-01-28 A | 2005-02-08 A | 57 | 100% | Developer 1 (TBD); Developer 2 (TBD); Developer 3 (TBD); Kara Siposki (Test Lead); Marc Sanders (Development Lead); Ryan Neff (Functional Lead); Stacy Lyle ( Functional Analyst); Todd Eliason (Tester) | 512h | 512h | 56,960 | 56,960 |
| 59 | 1.9.3 | Project Wrap-Up | 90d | 2005-02-09 A | 2005-06-14 A | 58 | 100% | Developer 1 (TBD); Developer 2 (TBD); Developer 3 (TBD); Kara Siposki (Test Lead); Marc Sanders (Development Lead); Rick Burke (Infrastructure Lead); Ryan Neff (Functional Lead); Stacy Lyle ( Functional Analyst); Todd Eliason (Tester) | 6480h | 6480h | 694,800 | 694,800 |
